# Airfield Apron Reconstruction, Phased

Schedule from Primavera P6, 2027-03-01 to 2028-01-13, data date 2027-03-01.

## Calendars

- 6-day x 8h: Mon-Sat 08:00-16:00; Sun off.

## Schedule

| ID | WBS | Activity | Type | Duration | Start | Finish | Predecessors | Total float |
| --- | --- | --- | --- | --- | --- | --- | --- | --- |
|  | 01 | **Milestones** |  |  | 2027-03-01 | 2028-01-13 |  |  |
| MS000 |  | Notice to Proceed | milestone | 0d | 2027-03-01 | 2027-03-01 |  | 0d |
| MS999 |  | Apron reconstruction complete | milestone | 0d | 2028-01-13 | 2028-01-13 | P6O | 0d |
|  | 02 | **Approvals** |  |  | 2027-03-01 | 2027-04-15 |  |  |
| EN100 |  | Phasing plan, safety plan & airfield approvals |  | 25d | 2027-03-01 | 2027-03-29 | MS000 | 0d |
| EN110 |  | Concrete mix design & test strip |  | 15d | 2027-03-30 | 2027-04-15 | EN100 | 0d |
|  | 03 | **Phase 1** |  |  | 2027-04-16 | 2027-05-31 |  |  |
| P1C |  | Phase 1: relocate aircraft from stand 1 |  | 1d | 2027-04-16 | 2027-04-16 | EN110 | 0d |
| P1B |  | Phase 1: place lighted barricades |  | 1d | 2027-04-17 | 2027-04-17 | P1C | 0d |
| P1D |  | Phase 1: break out & remove old pavement |  | 8d | 2027-04-19 | 2027-04-27 | P1B | 0d |
| P1S |  | Phase 1: subgrade repair & cement-treated base |  | 8d | 2027-04-28 | 2027-05-06 | P1D | 0d |
| P1P |  | Phase 1: slip-form concrete paving (6 lanes) |  | 9d | 2027-05-07 | 2027-05-17 | P1S | 0d |
| P1J |  | Phase 1: cure, saw-cut & seal joints |  | 7d | 2027-05-18 | 2027-05-25 | P1P | 0d |
| P1M |  | Phase 1: markings & lighting |  | 3d | 2027-05-26 | 2027-05-28 | P1J | 0d |
| P1X |  | Phase 1: remove barricades |  | 1d | 2027-05-29 | 2027-05-29 | P1M | 0d |
| P1O |  | Phase 1: inspection, reopen & return aircraft |  | 1d | 2027-05-31 | 2027-05-31 | P1X | 0d |
|  | 04 | **Phase 2** |  |  | 2027-06-01 | 2027-07-15 |  |  |
| P2C |  | Phase 2: relocate aircraft from stand 2 |  | 1d | 2027-06-01 | 2027-06-01 | P1O | 0d |
| P2B |  | Phase 2: place lighted barricades |  | 1d | 2027-06-02 | 2027-06-02 | P2C | 0d |
| P2D |  | Phase 2: break out & remove old pavement |  | 8d | 2027-06-03 | 2027-06-11 | P2B | 0d |
| P2S |  | Phase 2: subgrade repair & cement-treated base |  | 8d | 2027-06-12 | 2027-06-21 | P2D | 0d |
| P2P |  | Phase 2: slip-form concrete paving (6 lanes) |  | 9d | 2027-06-22 | 2027-07-01 | P2S | 0d |
| P2J |  | Phase 2: cure, saw-cut & seal joints |  | 7d | 2027-07-02 | 2027-07-09 | P2P | 0d |
| P2M |  | Phase 2: markings & lighting |  | 3d | 2027-07-10 | 2027-07-13 | P2J | 0d |
| P2X |  | Phase 2: remove barricades |  | 1d | 2027-07-14 | 2027-07-14 | P2M | 0d |
| P2O |  | Phase 2: inspection, reopen & return aircraft |  | 1d | 2027-07-15 | 2027-07-15 | P2X | 0d |

| ID | WBS | Activity | Duration | Start | Finish | Predecessors | Total float |
| --- | --- | --- | --- | --- | --- | --- | --- |
|  | 05 | **Phase 3** |  | 2027-07-16 | 2027-08-30 |  |  |
| P3C |  | Phase 3: relocate aircraft from stand 3 | 1d | 2027-07-16 | 2027-07-16 | P2O | 0d |
| P3B |  | Phase 3: place lighted barricades | 1d | 2027-07-17 | 2027-07-17 | P3C | 0d |
| P3D |  | Phase 3: break out & remove old pavement | 8d | 2027-07-19 | 2027-07-27 | P3B | 0d |
| P3S |  | Phase 3: subgrade repair & cement-treated base | 8d | 2027-07-28 | 2027-08-05 | P3D | 0d |
| P3P |  | Phase 3: slip-form concrete paving (6 lanes) | 9d | 2027-08-06 | 2027-08-16 | P3S | 0d |
| P3J |  | Phase 3: cure, saw-cut & seal joints | 7d | 2027-08-17 | 2027-08-24 | P3P | 0d |
| P3M |  | Phase 3: markings & lighting | 3d | 2027-08-25 | 2027-08-27 | P3J | 0d |
| P3X |  | Phase 3: remove barricades | 1d | 2027-08-28 | 2027-08-28 | P3M | 0d |
| P3O |  | Phase 3: inspection, reopen & return aircraft | 1d | 2027-08-30 | 2027-08-30 | P3X | 0d |
|  | 06 | **Phase 4** |  | 2027-08-31 | 2027-10-14 |  |  |
| P4C |  | Phase 4: relocate aircraft from stand 4 | 1d | 2027-08-31 | 2027-08-31 | P3O | 0d |
| P4B |  | Phase 4: place lighted barricades | 1d | 2027-09-01 | 2027-09-01 | P4C | 0d |
| P4D |  | Phase 4: break out & remove old pavement | 8d | 2027-09-02 | 2027-09-10 | P4B | 0d |
| P4S |  | Phase 4: subgrade repair & cement-treated base | 8d | 2027-09-11 | 2027-09-20 | P4D | 0d |
| P4P |  | Phase 4: slip-form concrete paving (6 lanes) | 9d | 2027-09-21 | 2027-09-30 | P4S | 0d |
| P4J |  | Phase 4: cure, saw-cut & seal joints | 7d | 2027-10-01 | 2027-10-08 | P4P | 0d |
| P4M |  | Phase 4: markings & lighting | 3d | 2027-10-09 | 2027-10-12 | P4J | 0d |
| P4X |  | Phase 4: remove barricades | 1d | 2027-10-13 | 2027-10-13 | P4M | 0d |
| P4O |  | Phase 4: inspection, reopen & return aircraft | 1d | 2027-10-14 | 2027-10-14 | P4X | 0d |
|  | 07 | **Phase 5** |  | 2027-10-15 | 2027-11-29 |  |  |
| P5C |  | Phase 5: relocate aircraft from stand 5 | 1d | 2027-10-15 | 2027-10-15 | P4O | 0d |
| P5B |  | Phase 5: place lighted barricades | 1d | 2027-10-16 | 2027-10-16 | P5C | 0d |
| P5D |  | Phase 5: break out & remove old pavement | 8d | 2027-10-18 | 2027-10-26 | P5B | 0d |
| P5S |  | Phase 5: subgrade repair & cement-treated base | 8d | 2027-10-27 | 2027-11-04 | P5D | 0d |
| P5P |  | Phase 5: slip-form concrete paving (6 lanes) | 9d | 2027-11-05 | 2027-11-15 | P5S | 0d |
| P5J |  | Phase 5: cure, saw-cut & seal joints | 7d | 2027-11-16 | 2027-11-23 | P5P | 0d |
| P5M |  | Phase 5: markings & lighting | 3d | 2027-11-24 | 2027-11-26 | P5J | 0d |
| P5X |  | Phase 5: remove barricades | 1d | 2027-11-27 | 2027-11-27 | P5M | 0d |
| P5O |  | Phase 5: inspection, reopen & return aircraft | 1d | 2027-11-29 | 2027-11-29 | P5X | 0d |

| ID | WBS | Activity | Duration | Start | Finish | Predecessors | Total float |
| --- | --- | --- | --- | --- | --- | --- | --- |
|  | 08 | **Phase 6** |  | 2027-11-30 | 2028-01-13 |  |  |
| P6C |  | Phase 6: relocate aircraft from stand 6 | 1d | 2027-11-30 | 2027-11-30 | P5O | 0d |
| P6B |  | Phase 6: place lighted barricades | 1d | 2027-12-01 | 2027-12-01 | P6C | 0d |
| P6D |  | Phase 6: break out & remove old pavement | 8d | 2027-12-02 | 2027-12-10 | P6B | 0d |
| P6S |  | Phase 6: subgrade repair & cement-treated base | 8d | 2027-12-11 | 2027-12-20 | P6D | 0d |
| P6P |  | Phase 6: slip-form concrete paving (6 lanes) | 9d | 2027-12-21 | 2027-12-30 | P6S | 0d |
| P6J |  | Phase 6: cure, saw-cut & seal joints | 7d | 2027-12-31 | 2028-01-07 | P6P | 0d |
| P6M |  | Phase 6: markings & lighting | 3d | 2028-01-08 | 2028-01-11 | P6J | 0d |
| P6X |  | Phase 6: remove barricades | 1d | 2028-01-12 | 2028-01-12 | P6M | 0d |
| P6O |  | Phase 6: inspection, reopen & return aircraft | 1d | 2028-01-13 | 2028-01-13 | P6X | 0d |
