# Live Airport Concourse: Restroom Refurbishment

Schedule from Primavera P6, 2027-01-04 to 2027-11-03, data date 2027-01-04.

## Calendars

- 6-day x 8h: Mon-Sat 08:00-16:00; Sun off.

## Schedule

| ID | WBS | Activity | Type | Duration | Start | Finish | Predecessors | Total float | Free float |
| --- | --- | --- | --- | --- | --- | --- | --- | --- | --- |
|  | 01 | **Milestones** |  |  | 2027-01-04 | 2027-11-03 |  |  |  |
| MS000 |  | Notice to Proceed | milestone | 0d | 2027-01-04 | 2027-01-04 |  | 0d |  |
| MS999 |  | All restroom blocks reopened | milestone | 0d | 2027-11-03 | 2027-11-03 | P6O | 0d |  |
|  | 02 | **Approvals & procurement** |  |  | 2027-01-04 | 2027-03-31 |  |  |  |
| EN100 |  | Design submittals & airport authority approvals |  | 30d | 2027-01-04 | 2027-02-06 | MS000 | 0d |  |
| PH000 |  | Temporary restroom trailers & wayfinding |  | 10d | 2027-02-08 | 2027-02-18 | EN100 | 35d | 0d |
| PR100 |  | Fixtures, partitions & tile: procure |  | 45d | 2027-02-08 | 2027-03-31 | EN100 | 0d |  |
|  | 03 | **Phase 1** |  |  | 2027-04-01 | 2027-05-06 |  |  |  |
| P1C |  | Phase 1: close RB-01, RB-02 to passengers |  | 1d | 2027-04-01 | 2027-04-01 | PR100, PH000 | 0d |  |
| P1H |  | Phase 1: erect dust-proof hoarding |  | 1d | 2027-04-02 | 2027-04-02 | P1C | 0d |  |
| P1D |  | Phase 1: strip-out & demolition |  | 5d | 2027-04-03 | 2027-04-08 | P1H | 0d |  |
| P1M |  | Phase 1: plumbing & electrical rough-in |  | 8d | 2027-04-09 | 2027-04-17 | P1D | 0d |  |
| P1F |  | Phase 1: waterproofing, tile & partitions |  | 10d | 2027-04-19 | 2027-04-29 | P1M | 0d |  |
| P1X |  | Phase 1: fixtures & accessories |  | 4d | 2027-04-30 | 2027-05-04 | P1F | 0d |  |
| P1R |  | Phase 1: remove hoarding & clean |  | 1d | 2027-05-05 | 2027-05-05 | P1X | 0d |  |
| P1O |  | Phase 1: inspection & reopen to passengers |  | 1d | 2027-05-06 | 2027-05-06 | P1R | 0d |  |
|  | 04 | **Phase 2** |  |  | 2027-05-07 | 2027-06-11 |  |  |  |
| P2C |  | Phase 2: close RB-03, RB-04 to passengers |  | 1d | 2027-05-07 | 2027-05-07 | PR100, PH000, P1O | 0d |  |
| P2H |  | Phase 2: erect dust-proof hoarding |  | 1d | 2027-05-08 | 2027-05-08 | P2C | 0d |  |
| P2D |  | Phase 2: strip-out & demolition |  | 5d | 2027-05-10 | 2027-05-14 | P2H | 0d |  |
| P2M |  | Phase 2: plumbing & electrical rough-in |  | 8d | 2027-05-15 | 2027-05-24 | P2D | 0d |  |
| P2F |  | Phase 2: waterproofing, tile & partitions |  | 10d | 2027-05-25 | 2027-06-04 | P2M | 0d |  |
| P2X |  | Phase 2: fixtures & accessories |  | 4d | 2027-06-05 | 2027-06-09 | P2F | 0d |  |
| P2R |  | Phase 2: remove hoarding & clean |  | 1d | 2027-06-10 | 2027-06-10 | P2X | 0d |  |
| P2O |  | Phase 2: inspection & reopen to passengers |  | 1d | 2027-06-11 | 2027-06-11 | P2R | 0d |  |

| ID | WBS | Activity | Duration | Start | Finish | Predecessors | Total float |
| --- | --- | --- | --- | --- | --- | --- | --- |
|  | 05 | **Phase 3** |  | 2027-06-12 | 2027-07-17 |  |  |
| P3C |  | Phase 3: close RB-05, RB-06 to passengers | 1d | 2027-06-12 | 2027-06-12 | PR100, PH000, P2O | 0d |
| P3H |  | Phase 3: erect dust-proof hoarding | 1d | 2027-06-14 | 2027-06-14 | P3C | 0d |
| P3D |  | Phase 3: strip-out & demolition | 5d | 2027-06-15 | 2027-06-19 | P3H | 0d |
| P3M |  | Phase 3: plumbing & electrical rough-in | 8d | 2027-06-21 | 2027-06-29 | P3D | 0d |
| P3F |  | Phase 3: waterproofing, tile & partitions | 10d | 2027-06-30 | 2027-07-10 | P3M | 0d |
| P3X |  | Phase 3: fixtures & accessories | 4d | 2027-07-12 | 2027-07-15 | P3F | 0d |
| P3R |  | Phase 3: remove hoarding & clean | 1d | 2027-07-16 | 2027-07-16 | P3X | 0d |
| P3O |  | Phase 3: inspection & reopen to passengers | 1d | 2027-07-17 | 2027-07-17 | P3R | 0d |
|  | 06 | **Phase 4** |  | 2027-07-19 | 2027-08-23 |  |  |
| P4C |  | Phase 4: close RB-07, RB-08 to passengers | 1d | 2027-07-19 | 2027-07-19 | PR100, PH000, P3O | 0d |
| P4H |  | Phase 4: erect dust-proof hoarding | 1d | 2027-07-20 | 2027-07-20 | P4C | 0d |
| P4D |  | Phase 4: strip-out & demolition | 5d | 2027-07-21 | 2027-07-26 | P4H | 0d |
| P4M |  | Phase 4: plumbing & electrical rough-in | 8d | 2027-07-27 | 2027-08-04 | P4D | 0d |
| P4F |  | Phase 4: waterproofing, tile & partitions | 10d | 2027-08-05 | 2027-08-16 | P4M | 0d |
| P4X |  | Phase 4: fixtures & accessories | 4d | 2027-08-17 | 2027-08-20 | P4F | 0d |
| P4R |  | Phase 4: remove hoarding & clean | 1d | 2027-08-21 | 2027-08-21 | P4X | 0d |
| P4O |  | Phase 4: inspection & reopen to passengers | 1d | 2027-08-23 | 2027-08-23 | P4R | 0d |
|  | 07 | **Phase 5** |  | 2027-08-24 | 2027-09-28 |  |  |
| P5C |  | Phase 5: close RB-09, RB-10 to passengers | 1d | 2027-08-24 | 2027-08-24 | PR100, PH000, P4O | 0d |
| P5H |  | Phase 5: erect dust-proof hoarding | 1d | 2027-08-25 | 2027-08-25 | P5C | 0d |
| P5D |  | Phase 5: strip-out & demolition | 5d | 2027-08-26 | 2027-08-31 | P5H | 0d |
| P5M |  | Phase 5: plumbing & electrical rough-in | 8d | 2027-09-01 | 2027-09-09 | P5D | 0d |
| P5F |  | Phase 5: waterproofing, tile & partitions | 10d | 2027-09-10 | 2027-09-21 | P5M | 0d |
| P5X |  | Phase 5: fixtures & accessories | 4d | 2027-09-22 | 2027-09-25 | P5F | 0d |
| P5R |  | Phase 5: remove hoarding & clean | 1d | 2027-09-27 | 2027-09-27 | P5X | 0d |
| P5O |  | Phase 5: inspection & reopen to passengers | 1d | 2027-09-28 | 2027-09-28 | P5R | 0d |

| ID | WBS | Activity | Duration | Start | Finish | Predecessors | Total float |
| --- | --- | --- | --- | --- | --- | --- | --- |
|  | 08 | **Phase 6** |  | 2027-09-29 | 2027-11-03 |  |  |
| P6C |  | Phase 6: close RB-11, RB-12 to passengers | 1d | 2027-09-29 | 2027-09-29 | PR100, PH000, P5O | 0d |
| P6H |  | Phase 6: erect dust-proof hoarding | 1d | 2027-09-30 | 2027-09-30 | P6C | 0d |
| P6D |  | Phase 6: strip-out & demolition | 5d | 2027-10-01 | 2027-10-06 | P6H | 0d |
| P6M |  | Phase 6: plumbing & electrical rough-in | 8d | 2027-10-07 | 2027-10-15 | P6D | 0d |
| P6F |  | Phase 6: waterproofing, tile & partitions | 10d | 2027-10-16 | 2027-10-27 | P6M | 0d |
| P6X |  | Phase 6: fixtures & accessories | 4d | 2027-10-28 | 2027-11-01 | P6F | 0d |
| P6R |  | Phase 6: remove hoarding & clean | 1d | 2027-11-02 | 2027-11-02 | P6X | 0d |
| P6O |  | Phase 6: inspection & reopen to passengers | 1d | 2027-11-03 | 2027-11-03 | P6R | 0d |
