# Colocation Data Center, 2 Data Halls (12 MW)

Schedule from Primavera P6, 2027-01-04 to 2027-10-06, data date 2027-01-04.

## Calendars

- 5-day x 8h: Mon-Fri 08:00-16:00; Sat-Sun off.

## Schedule

| ID | WBS | Activity | Type | Duration | Start | Finish | Predecessors | Total float | Free float |
| --- | --- | --- | --- | --- | --- | --- | --- | --- | --- |
|  | 01 | **Milestones** |  |  | 2027-01-04 | 2027-10-06 |  |  |  |
| MS000 |  | Notice to Proceed | milestone | 0d | 2027-01-04 | 2027-01-04 |  | 0d |  |
| ADRY |  | Hall A: building dried-in | milestone | 0d | 2027-04-07 | 2027-04-07 | AR3, AW3 | 20d | 0d |
| BDRY |  | Hall B: building dried-in | milestone | 0d | 2027-04-28 | 2027-04-28 | BR3, BW3 | 13d | 0d |
| ARFS |  | Hall A: ready for service | milestone | 0d | 2027-09-24 | 2027-09-24 | AFIT | 8d | 0d |
| BRFS |  | Hall B: ready for service | milestone | 0d | 2027-10-06 | 2027-10-06 | BFIT | 0d |  |
| MS999 |  | Substantial completion | milestone | 0d | 2027-10-06 | 2027-10-06 | ARFS, BRFS | 0d |  |
|  | 02 | **Engineering & procurement** |  |  | 2027-01-04 | 2027-06-04 |  |  |  |
| EN100 |  | IFC drawings & equipment submittals |  | 40d | 2027-01-04 | 2027-02-26 | MS000 | 0d |  |
| PR110 |  | Medium-voltage switchgear: fabricate & deliver |  | 65d | 2027-03-01 | 2027-05-28 | EN100 | 23d | 0d |
| PR120 |  | UPS modules: fabricate & deliver |  | 70d | 2027-03-01 | 2027-06-04 | EN100 | 20d | 0d |
| PR130 |  | Generators: fabricate & deliver |  | 60d | 2027-03-01 | 2027-05-21 | EN100 | 26d | 0d |
| PR140 |  | Chillers & CRAH units: fabricate & deliver |  | 70d | 2027-03-01 | 2027-06-04 | EN100 | 0d |  |
|  | 03 | **Civil & structure** |  |  | 2027-01-04 | 2027-04-28 |  |  |  |
| CV100 |  | Site clearance, mass grading & underground utilities |  | 25d | 2027-01-04 | 2027-02-05 | MS000 | 13d | 0d |
| AF0 |  | Hall A: footings & slab, bay 1 |  | 8d | 2027-02-08 | 2027-02-17 | CV100 | 20d | 0d |
| AF1 |  | Hall A: footings & slab, bay 2 |  | 8d | 2027-02-18 | 2027-03-01 | AF0 | 20d | 0d |
| AS0 |  | Hall A: erect steel, bay 1 |  | 6d | 2027-02-18 | 2027-02-25 | AF0 | 26d | 0d |
| AR0 |  | Hall A: roof deck & membrane, bay 1 |  | 5d | 2027-02-26 | 2027-03-04 | AS0 | 29d | 0d |
| BF0 |  | Hall B: footings & slab, bay 1 |  | 8d | 2027-03-01 | 2027-03-10 | CV100 FS+15d | 13d | 0d |
| AF2 |  | Hall A: footings & slab, bay 3 |  | 8d | 2027-03-02 | 2027-03-11 | AF1 | 20d | 0d |
| AS1 |  | Hall A: erect steel, bay 2 |  | 6d | 2027-03-02 | 2027-03-09 | AF1, AS0 | 24d | 0d |
| EBS |  | Electrical building: slab, walls & roof |  | 30d | 2027-03-02 | 2027-04-12 | AF1 | 57d | 0d |
| AR1 |  | Hall A: roof deck & membrane, bay 2 |  | 5d | 2027-03-10 | 2027-03-16 | AS1, AR0 | 26d | 0d |
| BF1 |  | Hall B: footings & slab, bay 2 |  | 8d | 2027-03-11 | 2027-03-22 | BF0 | 13d | 0d |
| BS0 |  | Hall B: erect steel, bay 1 |  | 6d | 2027-03-11 | 2027-03-18 | BF0 | 19d | 0d |
| AF3 |  | Hall A: footings & slab, bay 4 |  | 8d | 2027-03-12 | 2027-03-23 | AF2 | 20d | 0d |
| AS2 |  | Hall A: erect steel, bay 3 |  | 6d | 2027-03-12 | 2027-03-19 | AF2, AS1 | 22d | 0d |
| BR0 |  | Hall B: roof deck & membrane, bay 1 |  | 5d | 2027-03-19 | 2027-03-25 | BS0 | 22d | 0d |
| AR2 |  | Hall A: roof deck & membrane, bay 3 |  | 5d | 2027-03-22 | 2027-03-26 | AS2, AR1 | 23d | 0d |
| BF2 |  | Hall B: footings & slab, bay 3 |  | 8d | 2027-03-23 | 2027-04-01 | BF1 | 13d | 0d |
| BS1 |  | Hall B: erect steel, bay 2 |  | 6d | 2027-03-23 | 2027-03-30 | BF1, BS0 | 17d | 0d |
| AS3 |  | Hall A: erect steel, bay 4 |  | 6d | 2027-03-24 | 2027-03-31 | AF3, AS2 | 20d | 0d |
| BR1 |  | Hall B: roof deck & membrane, bay 2 |  | 5d | 2027-03-31 | 2027-04-06 | BS1, BR0 | 19d | 0d |
| AR3 |  | Hall A: roof deck & membrane, bay 4 |  | 5d | 2027-04-01 | 2027-04-07 | AS3, AR2 | 20d | 0d |
| BF3 |  | Hall B: footings & slab, bay 4 |  | 8d | 2027-04-02 | 2027-04-13 | BF2 | 13d | 0d |
| BS2 |  | Hall B: erect steel, bay 3 |  | 6d | 2027-04-02 | 2027-04-09 | BF2, BS1 | 15d | 0d |
| BR2 |  | Hall B: roof deck & membrane, bay 3 |  | 5d | 2027-04-12 | 2027-04-16 | BS2, BR1 | 16d | 0d |
| BS3 |  | Hall B: erect steel, bay 4 |  | 6d | 2027-04-14 | 2027-04-21 | BF3, BS2 | 13d | 0d |
| BR3 |  | Hall B: roof deck & membrane, bay 4 |  | 5d | 2027-04-22 | 2027-04-28 | BS3, BR2 | 13d | 0d |

| ID | WBS | Activity | Duration | Start | Finish | Predecessors | Total float | Free float |
| --- | --- | --- | --- | --- | --- | --- | --- | --- |
|  | 04 | **Building envelope** |  | 2027-02-26 | 2027-04-28 |  |  |  |
| AW0 |  | Hall A: insulated wall panels, bay 1 | 5d | 2027-02-26 | 2027-03-04 | AS0 | 29d | 0d |
| AW1 |  | Hall A: insulated wall panels, bay 2 | 5d | 2027-03-10 | 2027-03-16 | AS1, AW0 | 26d | 0d |
| BW0 |  | Hall B: insulated wall panels, bay 1 | 5d | 2027-03-19 | 2027-03-25 | BS0 | 22d | 0d |
| AW2 |  | Hall A: insulated wall panels, bay 3 | 5d | 2027-03-22 | 2027-03-26 | AS2, AW1 | 23d | 0d |
| BW1 |  | Hall B: insulated wall panels, bay 2 | 5d | 2027-03-31 | 2027-04-06 | BS1, BW0 | 19d | 0d |
| AW3 |  | Hall A: insulated wall panels, bay 4 | 5d | 2027-04-01 | 2027-04-07 | AS3, AW2 | 20d | 0d |
| BW2 |  | Hall B: insulated wall panels, bay 3 | 5d | 2027-04-12 | 2027-04-16 | BS2, BW1 | 16d | 0d |
| BW3 |  | Hall B: insulated wall panels, bay 4 | 5d | 2027-04-22 | 2027-04-28 | BS3, BW2 | 13d | 0d |
|  | 05 | **MEP installation** |  | 2027-04-08 | 2027-07-30 |  |  |  |
| AB0 |  | Hall A: busway & cable tray, row 1 | 5d | 2027-04-08 | 2027-04-14 | ADRY | 45d | 0d |
| AP0 |  | Hall A: chilled-water piping, row 1 | 6d | 2027-04-08 | 2027-04-15 | ADRY | 20d | 0d |
| AB1 |  | Hall A: busway & cable tray, row 2 | 5d | 2027-04-15 | 2027-04-21 | ADRY, AB0 | 45d | 0d |
| AP1 |  | Hall A: chilled-water piping, row 2 | 6d | 2027-04-16 | 2027-04-23 | ADRY, AP0 | 20d | 0d |
| AB2 |  | Hall A: busway & cable tray, row 3 | 5d | 2027-04-22 | 2027-04-28 | ADRY, AB1 | 45d | 0d |
| AP2 |  | Hall A: chilled-water piping, row 3 | 6d | 2027-04-26 | 2027-05-03 | ADRY, AP1 | 20d | 0d |
| AB3 |  | Hall A: busway & cable tray, row 4 | 5d | 2027-04-29 | 2027-05-05 | ADRY, AB2 | 45d | 0d |
| BB0 |  | Hall B: busway & cable tray, row 1 | 5d | 2027-04-29 | 2027-05-05 | BDRY | 30d | 0d |
| BP0 |  | Hall B: chilled-water piping, row 1 | 6d | 2027-04-29 | 2027-05-06 | BDRY | 13d | 0d |
| AP3 |  | Hall A: chilled-water piping, row 4 | 6d | 2027-05-04 | 2027-05-11 | ADRY, AP2 | 20d | 0d |
| AB4 |  | Hall A: busway & cable tray, row 5 | 5d | 2027-05-06 | 2027-05-12 | ADRY, AB3 | 45d | 0d |
| BB1 |  | Hall B: busway & cable tray, row 2 | 5d | 2027-05-06 | 2027-05-12 | BDRY, BB0 | 30d | 0d |
| BP1 |  | Hall B: chilled-water piping, row 2 | 6d | 2027-05-07 | 2027-05-14 | BDRY, BP0 | 13d | 0d |
| AP4 |  | Hall A: chilled-water piping, row 5 | 6d | 2027-05-12 | 2027-05-19 | ADRY, AP3 | 20d | 0d |
| BB2 |  | Hall B: busway & cable tray, row 3 | 5d | 2027-05-13 | 2027-05-19 | BDRY, BB1 | 30d | 0d |
| BP2 |  | Hall B: chilled-water piping, row 3 | 6d | 2027-05-17 | 2027-05-24 | BDRY, BP1 | 13d | 0d |
| BB3 |  | Hall B: busway & cable tray, row 4 | 5d | 2027-05-20 | 2027-05-26 | BDRY, BB2 | 30d | 0d |
| GENS |  | Set generators & fuel system | 12d | 2027-05-24 | 2027-06-08 | CV100, PR130 | 26d | 0d |
| BP3 |  | Hall B: chilled-water piping, row 4 | 6d | 2027-05-25 | 2027-06-01 | BDRY, BP2 | 13d | 0d |
| BB4 |  | Hall B: busway & cable tray, row 5 | 5d | 2027-05-27 | 2027-06-02 | BDRY, BB3 | 30d | 0d |
| EBSW |  | Set MV switchgear line-ups | 10d | 2027-05-31 | 2027-06-11 | EBS, PR110 | 23d | 0d |
| BP4 |  | Hall B: chilled-water piping, row 5 | 6d | 2027-06-02 | 2027-06-09 | BDRY, BP3 | 13d | 0d |
| ACH |  | Hall A: set roof chillers | 6d | 2027-06-07 | 2027-06-14 | AR3, PR140 | 2d | 0d |
| ACR |  | Hall A: set CRAH units | 8d | 2027-06-07 | 2027-06-16 | ADRY, PR140 | 0d |  |
| BCH |  | Hall B: set roof chillers | 6d | 2027-06-07 | 2027-06-14 | BR3, PR140 | 10d | 0d |
| BCR |  | Hall B: set CRAH units | 8d | 2027-06-07 | 2027-06-16 | BDRY, PR140 | 8d | 0d |
| EBUP |  | Set UPS modules & batteries | 8d | 2027-06-07 | 2027-06-16 | EBS, PR120 | 20d | 0d |
| AFL |  | Hall A: flush & pressure-test chilled water (4 crews) | 32d | 2027-06-17 | 2027-07-30 | AP4, ACR, ACH | 0d |  |
| BFL |  | Hall B: flush & pressure-test chilled water (4 crews) | 32d | 2027-06-17 | 2027-07-30 | BP4, BCR, BCH | 8d | 0d |
| TERM |  | Power terminations & energize distribution | 12d | 2027-06-17 | 2027-07-02 | EBSW, EBUP, GENS, AB4, BB4 | 20d | 0d |

| ID | WBS | Activity | Duration | Start | Finish | Predecessors | Total float | Free float |
| --- | --- | --- | --- | --- | --- | --- | --- | --- |
|  | 06 | **Commissioning** |  | 2027-08-02 | 2027-09-20 |  |  |  |
| AL3 |  | Hall A: L3 pre-functional checks | 10d | 2027-08-02 | 2027-08-13 | TERM, AFL, AB4 | 0d |  |
| BL3 |  | Hall B: L3 pre-functional checks | 10d | 2027-08-02 | 2027-08-13 | TERM, BFL, BB4 | 8d | 0d |
| AL4 |  | Hall A: L4 functional performance tests | 10d | 2027-08-16 | 2027-08-27 | AL3 | 0d |  |
| BL4 |  | Hall B: L4 functional performance tests | 10d | 2027-08-16 | 2027-08-27 | BL3 | 8d | 0d |
| AL5 |  | Hall A: L5 integrated systems test | 8d | 2027-08-30 | 2027-09-08 | AL4 | 0d |  |
| BL5 |  | Hall B: L5 integrated systems test | 8d | 2027-09-09 | 2027-09-20 | BL4, AL5 | 0d |  |
|  | 07 | **Fit-out** |  | 2027-09-09 | 2027-10-06 |  |  |  |
| AFIT |  | Hall A: white-space fit-out (racks & containment) | 12d | 2027-09-09 | 2027-09-24 | AL5 | 8d | 0d |
| BFIT |  | Hall B: white-space fit-out (racks & containment) | 12d | 2027-09-21 | 2027-10-06 | BL5 | 0d |  |
