# Arterial Road Resurfacing Program

Schedule from Primavera P6, 2027-04-05 to 2027-06-17, data date 2027-04-05.

## Calendars

- 5-day x 8h: Mon-Fri 08:00-16:00; Sat-Sun off.

## Schedule

| ID | WBS | Activity | Type | Duration | Start | Finish | Predecessors | Total float | Free float |
| --- | --- | --- | --- | --- | --- | --- | --- | --- | --- |
|  | 01 | **Milestones** |  |  | 2027-04-05 | 2027-06-17 |  |  |  |
| MS000 |  | Notice to Proceed | milestone | 0d | 2027-04-05 | 2027-04-05 |  | 0d |  |
| MS999 |  | All sections reopened | milestone | 0d | 2027-06-17 | 2027-06-17 | L1R, L2R, L3R, L4R, L5R, L6R | 0d |  |
|  | 02 | **Preconstruction** |  |  | 2027-04-05 | 2027-04-30 |  |  |  |
| EN100 |  | Traffic management plans & permits |  | 20d | 2027-04-05 | 2027-04-30 | MS000 | 0d |  |
| EN110 |  | Utility adjustments survey & mix design |  | 15d | 2027-04-05 | 2027-04-23 | MS000 | 5d | 0d |
|  | 03 | **Section 1** |  |  | 2027-05-03 | 2027-05-20 |  |  |  |
| L1T |  | Section 1: lane closures & traffic control set-up |  | 1d | 2027-05-03 | 2027-05-03 | EN100, EN110 | 0d |  |
| L1M |  | Section 1: mill existing surface |  | 3d | 2027-05-04 | 2027-05-06 | L1T | 0d |  |
| L1MM |  | Section 1: milled surface exposed | milestone | 0d | 2027-05-06 | 2027-05-06 | L1M | 30d | 0d |
| L1B |  | Section 1: base repairs & utility adjustments |  | 4d | 2027-05-07 | 2027-05-12 | L1M | 5d | 0d |
| L1P |  | Section 1: pave binder & surface course |  | 3d | 2027-05-13 | 2027-05-17 | L1B | 5d | 0d |
| L1S |  | Section 1: permanent striping |  | 2d | 2027-05-18 | 2027-05-19 | L1P | 20d | 0d |
| L1R |  | Section 1: remove traffic control & reopen |  | 1d | 2027-05-20 | 2027-05-20 | L1S | 20d | 0d |
|  | 04 | **Section 2** |  |  | 2027-05-07 | 2027-05-26 |  |  |  |
| L2T |  | Section 2: lane closures & traffic control set-up |  | 1d | 2027-05-07 | 2027-05-07 | EN100, EN110, L1M | 0d |  |
| L2M |  | Section 2: mill existing surface |  | 3d | 2027-05-10 | 2027-05-12 | L2T | 0d |  |
| L2MM |  | Section 2: milled surface exposed | milestone | 0d | 2027-05-12 | 2027-05-12 | L2M | 26d | 0d |
| L2B |  | Section 2: base repairs & utility adjustments |  | 4d | 2027-05-13 | 2027-05-18 | L2M | 4d | 0d |
| L2P |  | Section 2: pave binder & surface course |  | 3d | 2027-05-19 | 2027-05-21 | L2B, L1P | 4d | 0d |
| L2S |  | Section 2: permanent striping |  | 2d | 2027-05-24 | 2027-05-25 | L2P | 16d | 0d |
| L2R |  | Section 2: remove traffic control & reopen |  | 1d | 2027-05-26 | 2027-05-26 | L2S | 16d | 0d |
|  | 05 | **Section 3** |  |  | 2027-05-13 | 2027-06-01 |  |  |  |
| L3T |  | Section 3: lane closures & traffic control set-up |  | 1d | 2027-05-13 | 2027-05-13 | EN100, EN110, L2M | 0d |  |
| L3M |  | Section 3: mill existing surface |  | 3d | 2027-05-14 | 2027-05-18 | L3T | 0d |  |
| L3MM |  | Section 3: milled surface exposed | milestone | 0d | 2027-05-18 | 2027-05-18 | L3M | 22d | 0d |
| L3B |  | Section 3: base repairs & utility adjustments |  | 4d | 2027-05-19 | 2027-05-24 | L3M | 3d | 0d |
| L3P |  | Section 3: pave binder & surface course |  | 3d | 2027-05-25 | 2027-05-27 | L3B, L2P | 3d | 0d |
| L3S |  | Section 3: permanent striping |  | 2d | 2027-05-28 | 2027-05-31 | L3P | 12d | 0d |
| L3R |  | Section 3: remove traffic control & reopen |  | 1d | 2027-06-01 | 2027-06-01 | L3S | 12d | 0d |

| ID | WBS | Activity | Type | Duration | Start | Finish | Predecessors | Total float | Free float |
| --- | --- | --- | --- | --- | --- | --- | --- | --- | --- |
|  | 06 | **Section 4** |  |  | 2027-05-19 | 2027-06-07 |  |  |  |
| L4T |  | Section 4: lane closures & traffic control set-up |  | 1d | 2027-05-19 | 2027-05-19 | EN100, EN110, L3M | 0d |  |
| L4M |  | Section 4: mill existing surface |  | 3d | 2027-05-20 | 2027-05-24 | L4T | 0d |  |
| L4MM |  | Section 4: milled surface exposed | milestone | 0d | 2027-05-24 | 2027-05-24 | L4M | 18d | 0d |
| L4B |  | Section 4: base repairs & utility adjustments |  | 4d | 2027-05-25 | 2027-05-28 | L4M | 2d | 0d |
| L4P |  | Section 4: pave binder & surface course |  | 3d | 2027-05-31 | 2027-06-02 | L4B, L3P | 2d | 0d |
| L4S |  | Section 4: permanent striping |  | 2d | 2027-06-03 | 2027-06-04 | L4P | 8d | 0d |
| L4R |  | Section 4: remove traffic control & reopen |  | 1d | 2027-06-07 | 2027-06-07 | L4S | 8d | 0d |
|  | 07 | **Section 5** |  |  | 2027-05-25 | 2027-06-11 |  |  |  |
| L5T |  | Section 5: lane closures & traffic control set-up |  | 1d | 2027-05-25 | 2027-05-25 | EN100, EN110, L4M | 0d |  |
| L5M |  | Section 5: mill existing surface |  | 3d | 2027-05-26 | 2027-05-28 | L5T | 0d |  |
| L5MM |  | Section 5: milled surface exposed | milestone | 0d | 2027-05-28 | 2027-05-28 | L5M | 14d | 0d |
| L5B |  | Section 5: base repairs & utility adjustments |  | 4d | 2027-05-31 | 2027-06-03 | L5M | 1d | 0d |
| L5P |  | Section 5: pave binder & surface course |  | 3d | 2027-06-04 | 2027-06-08 | L5B, L4P | 1d | 0d |
| L5S |  | Section 5: permanent striping |  | 2d | 2027-06-09 | 2027-06-10 | L5P | 4d | 0d |
| L5R |  | Section 5: remove traffic control & reopen |  | 1d | 2027-06-11 | 2027-06-11 | L5S | 4d | 0d |
|  | 08 | **Section 6** |  |  | 2027-05-31 | 2027-06-17 |  |  |  |
| L6T |  | Section 6: lane closures & traffic control set-up |  | 1d | 2027-05-31 | 2027-05-31 | EN100, EN110, L5M | 0d |  |
| L6M |  | Section 6: mill existing surface |  | 3d | 2027-06-01 | 2027-06-03 | L6T | 0d |  |
| L6MM |  | Section 6: milled surface exposed | milestone | 0d | 2027-06-03 | 2027-06-03 | L6M | 10d | 0d |
| L6B |  | Section 6: base repairs & utility adjustments |  | 4d | 2027-06-04 | 2027-06-09 | L6M | 0d |  |
| L6P |  | Section 6: pave binder & surface course |  | 3d | 2027-06-10 | 2027-06-14 | L6B, L5P | 0d |  |
| L6S |  | Section 6: permanent striping |  | 2d | 2027-06-15 | 2027-06-16 | L6P | 0d |  |
| L6R |  | Section 6: remove traffic control & reopen |  | 1d | 2027-06-17 | 2027-06-17 | L6S | 0d |  |
